# RTx_schedule_updated

Schedule from MS Project, 2014-01-15 to 2014-05-28, A marks actual dates.
Lattice Semiconductor

## Calendars

- Standard: Mon-Sun 08:00-12:00, 13:00-17:00.

## Resources

| Resource |
| --- |
| Robert |
| Rob |
| Robin |

## Schedule

| ID | WBS | Task | Type | Duration | Start | Finish | Predecessors | Complete | Remaining | Total slack | Resources | Work | Actual work |
| --- | --- | --- | --- | --- | --- | --- | --- | --- | --- | --- | --- | --- | --- |
| 1 | 1 | **RTx Controller** |  | 133.75d | 2014-01-15 A | 2014-05-28 |  | 69% | 40.83d | 0d |  | 1420h | 984h |
| 2 | 1.1 | **RTx Controller Hardware** |  | 133.75d | 2014-01-15 A | 2014-05-28 |  | 80% | 26.4d | 0d |  | 620h | 507h |
| 3 | 1.1.1 | **Schematic** |  | 133.75d | 2014-01-15 A | 2014-05-28 |  | 93% | 9.83d | 0d |  | 424h | 394h |
| 4 | 1.1.1.1 | Verify processor selection | manual | 6d | 2014-01-15 A | 2014-01-20 A |  | 100% |  |  | Robert | 48h | 48h |
| 5 | 1.1.1.2 | Review and document ADC filter design | manual | 5d | 2014-01-26 A | 2014-01-30 A |  | 100% |  |  | Rob | 40h | 40h |
| 6 | 1.1.1.3 | Implement Ethernet port in HW | manual | 14d | 2014-01-26 A | 2014-02-08 A | 4 | 100% |  |  | Robert | 112h | 112h |
| 7 | 1.1.1.4 | Implement USB port in HW | manual | 3d | 2014-02-06 A | 2014-02-08 A | 4 | 100% |  |  | Robin | 24h | 24h |
| 8 | 1.1.1.5 | Determine PCB power requirements and design power supplies | manual | 6d | 2014-02-13 A | 2014-02-18 A | 4, 6, 7 | 100% |  |  | Robert | 48h | 48h |
| 9 | 1.1.1.6 | Select connectors and cabling | manual | 4d | 2014-04-05 A | 2014-05-26 | 6, 7 | 50% | 2d |  | Rob | 32h | 16h |
| 10 | 1.1.1.7 | Finalize processor pin-out | manual | 6d | 2014-02-17 A | 2014-02-22 A | 6, 7 | 100% |  |  | Robert; Rob | 64h | 64h |
| 11 | 1.1.1.8 | FMEA of RTx Controller Board/Revise Schematic | manual | 7d | 2014-03-03 A | 2014-05-28 | 4, 6, 7, 9, 10 | 75% | 1.75d |  | Robin | 56h | 42h |
| 12 | 1.1.2 | **PCB** |  | 76.25d | 2014-03-10 A | 2014-05-25 | 3 | 55% | 34.31d | 0d |  | 196h | 113h |
| 13 | 1.1.2.1 | **Layout PCB** |  | 41.25d | 2014-03-10 A | 2014-04-20 | 3 | 76% | 9.74d | 0d |  | 140h | 113h |
| 14 | 1.1.2.1.1 | General Layout of RTx Controller PCB | manual | 14d | 2014-03-10 A | 2014-04-20 | 3, 83, 15 | 70% | 4.25d |  | Robin; Rob [50%] | 108h | 81h |
| 15 | 1.1.2.1.2 | High-speed Signal Routing (including research) | manual | 4d | 2014-04-04 A | 2014-04-07 A | 3 | 100% |  |  | Robert | 32h | 32h |
| 16 | 1.1.2.2 | Assemble RTx Controller PCB | manual | 7d | 2014-05-18 | 2014-05-25 | 14, 15 |  |  |  | Robin | 56h |  |
| 17 | 1.2 | **RTx Controller Firmware** |  | 108d | 2014-02-06 A | 2014-05-24 |  | 62% | 40.74d | 0d |  | 800h | 477h |
| 18 | 1.2.1 | **Develop Axis Position Control Loop** |  | 67.75d | 2014-02-06 A | 2014-04-14 A |  | 100% |  |  |  | 192h | 192h |
| 19 | 1.2.1.1 | Research Control Theory | manual | 11d | 2014-02-06 A | 2014-02-16 A |  | 100% |  |  | Rob | 88h | 88h |
| 20 | 1.2.1.2 | Model control transfer function and derive PID coefficients | manual | 4d | 2014-02-21 A | 2014-04-07 A | 19 | 100% |  |  | Rob | 32h | 32h |
| 21 | 1.2.1.3 | Develop code for PID loop | manual | 9d | 2014-02-25 A | 2014-04-14 A | 20 | 100% |  |  | Rob | 72h | 72h |
| 22 | 1.2.2 | **Develop Ethernet API** |  | 72d | 2014-03-06 A | 2014-05-16 |  | 66% | 24.39d | 0d |  | 384h | 237h |
| 23 | 1.2.2.1 | Research ChibiOS/RT UDP implementation | manual | 7d | 2014-03-06 A | 2014-03-12 A |  | 100% |  |  | Rob [50%] | 28h | 28h |
| 24 | 1.2.2.2 | Write General Ethernet API | manual | 21d | 2014-03-13 A | 2014-05-16 | 23 | 75% | 5.25d |  | Rob [50%] | 84h | 63h |
| 25 | 1.2.2.3 | Determine required Sightline functionalities | manual | 13d | 2014-03-19 A | 2014-04-14 A | 28 | 100% |  |  | Robert | 104h | 104h |
| 26 | 1.2.2.4 | Write Ethernet API Code for Sightline | manual | 21d | 2014-04-23 A | 2014-05-16 | 25 | 25% | 15.75d |  | Robert | 168h | 42h |

| ID | WBS | Task | Type | Duration | Start | Finish | Predecessors | Complete | Remaining | Total slack | Constraint | Resources | Work | Actual work |
| --- | --- | --- | --- | --- | --- | --- | --- | --- | --- | --- | --- | --- | --- | --- |
| 27 | 1.2.3 | **Develop tracking algorithm** |  | 79d | 2014-03-07 A | 2014-05-24 |  | 21% | 62.07d | 0d |  |  | 224h | 48h |
| 28 | 1.2.3.1 | Research capabilities of Sightline SLA1500 | manual | 6d | 2014-03-07 A | 2014-03-12 A |  | 100% |  |  |  | Robert | 48h | 48h |
| 29 | 1.2.3.2 | Develop tracking algorithm | manual | 11d | 2014-05-03 | 2014-05-13 |  |  |  |  |  | Rob | 88h |  |
| 30 | 1.2.3.3 | Write tracking code | manual | 11d | 2014-05-14 | 2014-05-24 | 29, 10 |  |  |  |  | Rob | 88h |  |
| 31 | 2 | **Battery Unit** |  | 8d | 2014-02-27 A | 2014-03-06 A |  | 100% |  |  |  |  | 64h | 64h |
| 32 | 2.1 | Determine system power requirements | manual | 4d | 2014-02-27 A | 2014-03-02 A | 8 | 100% |  |  |  | Robert | 32h | 32h |
| 33 | 2.2 | Design battery switch/precharge and cabling | manual | 4d | 2014-03-03 A | 2014-03-06 A | 32 | 100% |  |  |  | Robert | 32h | 32h |
| 34 | 3 | **Manual Control Unit** |  | 92d | 2014-01-31 A | 2014-05-02 |  | 28% | 66.7d | 0d |  |  | 320h | 88h |
| 35 | 3.1 | **Hardware** |  | 90.25d | 2014-01-31 A | 2014-05-01 |  | 69% | 28.2d | 0d |  |  | 128h | 88h |
| 36 | 3.1.1 | Design ADC filters for the manual inputs | manual | 6d | 2014-01-31 A | 2014-02-05 A |  | 100% |  |  |  | Rob | 48h | 48h |
| 37 | 3.1.2 | Complete enclosure of manual controller | manual | 3d | 2014-04-28 | 2014-05-01 | 36, 39 |  |  |  |  | Robert | 24h |  |
| 38 | 3.1.3 | FMEA of RTx Manual Remote Board/Revise Schematic | manual | 2d | 2014-02-09 A | 2014-02-10 A | 36 | 100% |  |  |  | Robin | 16h | 16h |
| 39 | 3.1.4 | PCB Layout | manual | 3d | 2014-02-11 A | 2014-02-13 A | 36, 38 | 100% |  |  |  | Robin | 24h | 24h |
| 40 | 3.1.5 | Assemble Manual Remote PCB | manual | 2d | 2014-04-18 | 2014-04-19 | 36, 38, 39 |  |  |  |  | Robert | 16h |  |
| 41 | 3.2 | **Software** |  | 24d | 2014-04-09 | 2014-05-02 |  |  |  | 0d |  |  | 192h |  |
| 42 | 3.2.1 | Develop manual control algorithm | manual | 14d | 2014-04-09 | 2014-04-22 | 36 |  |  |  |  | Rob | 112h |  |
| 43 | 3.2.2 | Write code for Manual Control | manual | 10d | 2014-04-23 | 2014-05-02 | 42 |  |  |  |  | Rob | 80h |  |
| 44 | 4 | **FMEA of Mechanical Structure** |  | 28d | 2014-04-20 | 2014-05-18 | 3, 34, 31 |  |  | 0d |  |  | 224h |  |
| 45 | 4.1 | Determine all single points of failure and determine which ones could result in injury or permanent damage | manual | 14d | 2014-04-20 | 2014-05-04 |  |  |  |  | start no earlier than 2014-03-25 | Robin | 112h |  |
| 46 | 4.2 | Determine methods of prevention/Revisions/Design | manual | 14d | 2014-05-04 | 2014-05-18 | 45 |  |  |  | start no earlier than 2014-03-20 | Robin | 112h |  |
| 47 | 5 | **Design the power filter for the axis motors** |  | 65d | 2014-02-17 A | 2014-04-22 |  | 73% | 17.73d | 0d |  |  | 88h | 64h |
| 48 | 5.1 | Power Filter Schematic | manual | 4d | 2014-02-17 A | 2014-02-20 A |  | 100% |  |  |  | Robin | 32h | 32h |
| 49 | 5.2 | Power Filter PCB layout | manual | 4d | 2014-02-21 A | 2014-02-24 A | 48 | 100% |  |  |  | Robin | 32h | 32h |
| 50 | 5.3 | Assemble Power Filter PCB | manual | 3d | 2014-04-20 | 2014-04-22 | 48, 49 |  |  |  |  | Robert | 24h |  |
| 51 | 6 | Select Ethernet switch | manual | 5d | 2014-01-21 A | 2014-01-25 A |  | 100% |  |  |  | Robert | 40h | 40h |

| ID | WBS | Task | Type | Duration | Start | Finish | Predecessors |
| --- | --- | --- | --- | --- | --- | --- | --- |
| 52 | 7 | **Testing** |  | 40d? | 2014-01-26 | 2014-03-06 | 1 |
| 53 | 7.1 | **RTx controller** |  | 1d | 2014-01-26 | 2014-01-26 |  |
| 54 | 7.1.1 | **Hardware** |  | 1d | 2014-01-26 | 2014-01-26 |  |
| 55 | 7.1.1.1 | Test development (Robert/Robin – 2 hours) | manual | 1.5d | 2014-01-26 | 2014-01-27 |  |
| 56 | 7.1.1.2 | Test execution and debugging (Robert/Robin – 3 hours) | manual | 2d | 2014-01-26 | 2014-01-27 | 55 |
| 57 | 7.1.1.3 | Revision (Robert /Robin– 3 hours) | manual | 2d | 2014-01-26 | 2014-01-27 | 56 |
| 58 | 7.1.2 | **Firmware** |  | 1d | 2014-01-26 | 2014-01-26 |  |
| 59 | 7.1.2.1 | Test development (Rob – 32 hours) | manual | 22d | 2014-01-26 | 2014-02-16 |  |
| 60 | 7.1.2.2 | Test execution and debugging (Rob – 32 hours) | manual | 22d | 2014-01-26 | 2014-02-16 | 59 |
| 61 | 7.1.2.3 | Revision (Rob – 16 hours) | manual | 11d | 2014-01-26 | 2014-02-05 | 60 |
| 62 | 7.1.3 | **Integration** |  | 1d | 2014-01-26 | 2014-01-26 |  |
| 63 | 7.1.3.1 | Test development (All members – 8 hours) | manual | 6d | 2014-01-26 | 2014-01-31 |  |
| 64 | 7.1.3.2 | Test execution and debugging (All members – 6 hours) | manual | 4d | 2014-01-26 | 2014-01-29 | 63 |
| 65 | 7.1.3.3 | Revision (All members - 6 hours) | manual | 4d | 2014-01-26 | 2014-01-29 | 64 |
| 66 | 7.2 | **Manual controller** |  | 1d | 2014-01-26 | 2014-01-26 |  |
| 67 | 7.2.1 | **Hardware** |  | 1d | 2014-01-26 | 2014-01-26 |  |
| 68 | 7.2.1.1 | Test development (Robert/Robin – 1 hour) | manual | 1d | 2014-01-26 | 2014-01-26 |  |
| 69 | 7.2.1.2 | Test execution and debugging (Robert/Robin – 1 hour) | manual | 1d | 2014-01-26 | 2014-01-26 | 68 |
| 70 | 7.2.1.3 | Revision (Robert/Robin – 1 hour) | manual | 1d | 2014-01-26 | 2014-01-26 | 69 |
| 71 | 7.2.2 | **Firmware** |  | 1d | 2014-01-26 | 2014-01-26 |  |
| 72 | 7.2.2.1 | Test development (Rob – 8 hours) | manual | 6d | 2014-01-26 | 2014-01-31 |  |
| 73 | 7.2.2.2 | Test execution and debugging (Rob – 8 hours) | manual | 6d | 2014-01-26 | 2014-01-31 | 72 |
| 74 | 7.2.2.3 | Revision (Rob – 4 hours) | manual | 3d | 2014-01-26 | 2014-01-28 | 73 |
| 75 | 7.2.3 | **Integration** |  | 1d | 2014-01-26 | 2014-01-26 |  |
| 76 | 7.2.3.1 | Test development (All members – 1 hour) | manual | 1d | 2014-01-26 | 2014-01-26 |  |
| 77 | 7.2.3.2 | Test execution and debugging (All members – 1 hour) | manual | 1d | 2014-01-26 | 2014-01-26 | 76 |
| 78 | 7.2.3.3 | Revision (All members – 1 hour) | manual | 1d | 2014-01-26 | 2014-01-26 | 77 |

| ID | WBS | Task | Type | Duration | Start | Finish | Predecessors | Complete | Resources | Work | Actual work |
| --- | --- | --- | --- | --- | --- | --- | --- | --- | --- | --- | --- |
| 79 | 7.3 | **System integration** |  | 1d | 2014-01-26 | 2014-01-26 |  |  |  |  |  |
| 80 | 7.3.1 | Test development (All members – 4 hours) | manual | 3d | 2014-01-26 | 2014-01-28 |  |  |  |  |  |
| 81 | 7.3.2 | Test execution and debugging (All members – 4 hours) | manual | 3d | 2014-01-26 | 2014-01-28 | 80 |  |  |  |  |
| 82 | 7.3.3 | Revision (All members – 16 hours) | manual | 11d | 2014-01-26 | 2014-02-05 | 81 |  |  |  |  |
| 83 | 8 | **Enclosure** |  | 6d | 2014-02-25 A | 2014-03-02 A |  | 100% |  | 48h | 48h |
| 84 | 8.1 | Select enclosure and determine PCB size and shape | manual | 6d | 2014-02-25 A | 2014-03-02 A |  | 100% | Robin | 48h | 48h |
| 85 | 9 | **Project Management** |  | 5d | 2014-01-26 A | 2014-01-30 A |  | 100% |  | 40h | 40h |
| 86 | 9.1 | Complete project proposal documentation | manual | 1d | 2014-01-26 A | 2014-01-26 A |  | 100% | Robin | 8h | 8h |
| 87 | 9.2 | Finish scheduling tasks up to testing | manual | 3d | 2014-01-28 A | 2014-01-30 A |  | 100% | Robin | 24h | 24h |
| 88 | 9.3 | Write project description for Jeske | manual | 1d | 2014-01-27 A | 2014-01-27 A |  | 100% | Robin | 8h | 8h |
| 89 | 10 | <New Task> | manual | 1d? | 2014-01-26 | 2014-01-26 |  |  |  |  |  |
| 90 | 11 | <New Task> | manual | 1d? | 2014-01-26 | 2014-01-26 |  |  |  |  |  |
| 91 | 12 | <New Task> | manual | 1d? | 2014-01-26 | 2014-01-26 |  |  |  |  |  |
